# WBS PROGETTONE GROSSO PIU GROSSO 2015

How a schedule from MS Project changed from version to version. A marks actual dates.

## Version 1 (data date 2015-11-28, saved 2015-11-26)

Note of the change: Aggiunto file wbs/obs con percentuali al 29/11/2015

| ID | WBS | Task | Duration | Start | Finish | Predecessors | Complete | Total float |
| --- | --- | --- | --- | --- | --- | --- | --- | --- |
| 1 | 1 | **PROGETTONE** | 129d? | 2015-11-26 A | 2016-04-23 |  | 2% | 0d |
| 2 | 1.1 | **AVVIO** | 8d? | 2015-11-26 A | 2015-12-04 |  | 40% | 0d |
| 3 |  | Analisi del progetto | 3d | 2015-11-26 A | 2015-11-28 A |  | 100% |  |
| 4 |  | Studio di fattibilità | 2d | 2015-11-30 | 2015-12-01 | 3 |  | 0d |
| 5 |  | Compilazione documento requisiti | 2d | 2015-11-30 A | 2015-12-01 | 3 | 50% | 1d |
| 6 |  | Definizione ambienti di sviluppo | 1d | 2015-12-02 | 2015-12-02 | 4 |  | 0d |
| 7 |  | Aggiornamento WBS e OBS | 2d? | 2015-12-03 | 2015-12-04 | 3, 4, 5, 6 |  | 0d |
| 8 | 1.2 | **PROGETTAZIONE** | 13d? | 2015-12-05 | 2015-12-19 |  |  | 0d |
| 9 |  | Definizione specifiche progetto | 5d | 2015-12-05 | 2015-12-10 | 2 |  | 0d |
| 10 |  | Organizzazione gameplay | 3d | 2015-12-11 | 2015-12-14 | 9 |  | 5d |
| 11 |  | Definizione specifiche controller | 2d | 2015-12-11 | 2015-12-12 | 9 |  | 6d |
| 12 |  | Concept mappe, personaggi e storia | 5d? | 2015-12-15 | 2015-12-19 | 2FS+2d, 9 |  | 0d |
| 13 | 1.3 | **ESECUZIONE** | 87d? | 2015-12-21 | 2016-03-30 |  |  | 0d |
| 14 | 1.3.1 | **LOGICA APPLICATIVA APPLICAZIONE** | 73d | 2015-12-21 | 2016-03-14 |  |  | 0d |
| 15 |  | Esplorazione funzionalità ambiente e librerie di sviluppo | 7d | 2015-12-21 | 2015-12-28 | 8 |  | 0d |
| 16 |  | Programmazione movimento | 14d | 2015-12-29 | 2016-01-13 | 15 |  | 0d |
| 17 |  | Programmazione movimenti di oggetti estranei al giocatore | 10d | 2016-01-14 | 2016-01-25 | 16 |  | 0d |
| 18 |  | Disegni per scenari, animazioni e oggetti | 21d | 2016-01-01 | 2016-01-25 | 8 |  | 60d |
| 19 |  | Gestione delle collisioni (proiettili) | 14d | 2016-01-26 | 2016-02-10 | 16, 17 |  | 0d |
| 20 |  | Gestione delle collisioni (vita e statistiche generali) | 14d | 2016-02-11 | 2016-02-26 | 16, 17, 19 |  | 0d |
| 21 |  | Programmazione IA | 14d | 2016-02-27 | 2016-03-14 | 20 |  | 0d |
| 22 | 1.3.2 | **CONTROLLER** | 1d? | 2016-03-15 | 2016-03-15 |  |  | 18d |
| 23 |  | Acquisto materiali | 1d? | 2016-03-15 | 2016-03-15 | 14 |  | 18d |
| 24 |  | Assemblaggio | 1d? | 2016-03-15 | 2016-03-15 | 14 |  | 18d |
| 25 |  | Drivers e test | 1d? | 2016-03-15 | 2016-03-15 | 14 |  | 18d |
| 26 | 1.3.3 | **EXTRA** | 28d | 2016-02-27 | 2016-03-30 |  |  | 5d |
| 27 |  | Autenticazione e registrazione su sito web per credenziali e statistiche personali | 7d | 2016-02-27 | 2016-03-05 | 20 |  | 19d |
| 28 |  | Gestione Database con statistiche giocatore | 7d | 2016-03-07 | 2016-03-14 | 27 |  | 19d |
| 29 |  | Modalità cooperativa | 14d | 2016-03-15 | 2016-03-30 | 21 |  | 0d |
| 30 | 1.4 | **CHIUSURA** | 21d? | 2016-03-31 | 2016-04-23 | 13 |  | 0d |
| 31 |  | Testing Logica Applicativa | 14d | 2016-03-31 | 2016-04-15 | 14 |  | 5d |
| 32 |  | Testing Sito | 2d? | 2016-04-16 | 2016-04-18 | 31 |  | 5d |
| 33 |  | Testing coop | 5d | 2016-04-19 | 2016-04-23 | 29 |  | 0d |

## Version 2 (data date 2015-11-28, saved 2015-12-04)

Note of the change: Aggiunto file analisi e aggiornamento wbs/obs

Last finish stays 2016-04-23. Complete tasks 1 → 2.

Changed:

| ID | Task | Start | Finish | Duration | Complete | Total float |
| --- | --- | --- | --- | --- | --- | --- |
| 1 | **PROGETTONE** |  |  |  | 2% → 5% |  |
| 2 | **AVVIO** |  |  |  | 40% → 50% | 0d → 3d |
| 6 | Definizione ambienti di sviluppo | 2015-12-02 A | 2015-12-02 A |  | 0% → 100% | 0d → none |
| 8 | **PROGETTAZIONE** | 2015-12-05 A |  |  | 0% → 29% |  |
| 9 | Definizione specifiche progetto | 2015-12-05 A |  |  | 0% → 75% |  |
| 11 | Definizione specifiche controller | 2015-12-11 → 2015-12-10 (-1d) | 2015-12-12 → 2015-12-10 (-2d) | 2d → 0d |  | 6d → 8d |

## Version 3 (data date 2015-11-28, saved 2016-01-11)

Note of the change: prototipazione

Last finish stays 2016-04-23. Complete tasks 2 → 9.

Changed:

| ID | Task | Start | Finish | Complete | Total float |
| --- | --- | --- | --- | --- | --- |
| 1 | **PROGETTONE** |  |  | 5% → 16% |  |
| 2 | **AVVIO** |  | 2015-12-04 A | 50% → 100% | 3d → none |
| 4 | Studio di fattibilità | 2015-11-30 A | 2015-12-01 A | 0% → 100% | 4d → none |
| 5 | Compilazione documento requisiti |  | 2015-12-01 A | 50% → 100% | 4d → none |
| 7 | Aggiornamento WBS e OBS | 2015-12-03 A | 2015-12-04 A | 0% → 100% | 3d → none |
| 8 | **PROGETTAZIONE** |  |  | 29% → 71% | 0d → 60d |
| 9 | Definizione specifiche progetto |  | 2015-12-10 A | 75% → 100% | 0d → none |
| 10 | Organizzazione gameplay | 2015-12-11 A | 2015-12-14 A | 0% → 100% | 5d → none |
| 11 | Definizione specifiche controller | 2015-12-10 A | 2015-12-10 A | 0% → 100% | 8d → none |
| 12 | Concept mappe, personaggi e storia | 2015-12-15 A |  | 0% → 25% | 0d → 60d |
| 13 | **ESECUZIONE** | 2015-12-21 A |  | 0% → 6% | 0d → 5d |
| 14 | **LOGICA APPLICATIVA APPLICAZIONE** | 2015-12-21 A |  | 0% → 7% | 0d → 18d |
| 15 | Esplorazione funzionalità ambiente e librerie di sviluppo | 2015-12-21 A | 2015-12-28 A | 0% → 100% | 0d → none |
